How a schedule from GanttProject changed from version to version. A marks actual dates.

## Version 1 (saved 2009-02-26)

Note of the change: Add draft version of Gantt Diagram and midterm internship meeting

| ID | WBS | Task | Duration | Start | Finish | Predecessors | Complete |
| --- | --- | --- | --- | --- | --- | --- | --- |
| 1 |  | Prototype | 1d | 2008-12-04 | 2008-12-04 |  | 100% |
| 2 | 2 | **Project Management** | 91d | 2008-12-05 | 2009-06-25 |  | 12% |
| 3 | 2.1 | **Project Setup** | 3d | 2008-12-05 | 2008-12-12 | 1 | 100% |
| 4 |  | Platform setup | 1d | 2008-12-05 | 2008-12-05 |  | 100% |
| 5 |  | Code Reorganization | 2d | 2008-12-11 | 2008-12-12 |  | 100% |
| 6 |  | Setting up a temporary svn | 1d | 2008-12-05 | 2008-12-05 |  | 100% |
| 7 |  | Wiki creation | 2d | 2009-02-05 | 2009-02-06 |  | 100% |
| 8 |  | Wiki Updating | 77d | 2009-02-12 | 2009-06-26 | 7 | 4% |
| 9 |  | Project's Gantt Diagram | 1d | 2009-02-26 | 2009-02-26 |  | 100% |
| 10 |  | Write a script to have a compiled application for each version | 1d | 2009-01-08 | 2009-01-08 |  | 100% |
| 11 |  | Move project to Google Code | 1d | 2009-01-09 | 2009-01-09 |  | 100% |
| 12 |  | Midterm internship meeting | 1d | 2009-02-27 | 2009-02-27 | 9 |  |
| 13 | 3 | **Graphical Layer Abstraction** | 7d | 2008-12-11 | 2009-01-15 |  | 100% |
| 14 |  | Set up a bridge for graphic engines | 2d | 2008-12-11 | 2008-12-12 |  | 100% |
| 15 |  | Integration of GWT Incubator graphic engine | 6d | 2008-12-12 | 2009-01-15 |  | 100% |
| 16 | 4 | **Visual Interface** | 7d | 2009-01-08 | 2009-01-29 |  | 100% |
| 17 |  | Creation | 1d | 2009-01-08 | 2009-01-08 |  | 100% |
| 18 |  | VI Code spearation | 2d | 2009-01-15 | 2009-01-16 |  | 100% |
| 19 |  | HTML Loading Screen | 1d | 2009-01-29 | 2009-01-29 |  | 100% |
| 20 | 5 | **Cleanness of code** | 1d | 2009-01-08 | 2009-01-08 |  | 75% |
| 21 |  | Code cleanup | 1d | 2009-01-08 | 2009-01-08 |  | 80% |
| 22 | 5.2 | **Code Rewrite** | 1d | 2009-01-08 | 2009-01-08 |  | 70% |
| 23 |  | Dynamic Edition System | 1d | 2009-01-08 | 2009-01-08 |  | 80% |
| 24 |  | Artifacts | 1d | 2009-01-08 | 2009-01-08 |  | 60% |
| 25 |  | Code JavaDoc | 1d | 2009-03-12 | 2009-03-12 |  |  |
| 26 |  | Interaction emulation layer | 1d | 2009-03-27 | 2009-03-27 |  |  |
| 27 |  | Adding object diagram for code generation | 1d | 2009-04-02 | 2009-04-02 |  |  |
| 28 |  | Saving diagram in xml like format | 1d | 2009-04-13 | 2009-04-13 |  |  |
| 29 |  | Setting a server side to save diagrams like documents in google docs | 1d | 2009-04-20 | 2009-04-20 |  |  |
| 30 |  | Adding other UML diagrams | 1d | 2009-05-04 | 2009-05-04 |  |  |

## Version 2 (saved 2009-02-26)

Note of the change: Gantt Diagram update

Last finish stays 2009-06-26. Complete tasks 13 → 15.

Added:

| ID | Task | Duration | Start | Finish | Predecessors |
| --- | --- | --- | --- | --- | --- |
| 2 | **Internship (PFE)** | 92d | 2008-12-05 | 2009-06-26 | 1 |
| 3 | Dual Education (Alternance) | 27d | 2008-12-05 | 2009-03-27 |  |
| 4 | Full Time | 65d | 2009-03-30 | 2009-06-26 | 3 |
| 22 | Improvements | 2d | 2009-01-22 | 2009-01-23 | 21 |
| 23 | Context Menu | 1d | 2009-01-29 | 2009-01-29 | 22 |
| 32 | Keyboard Part | 2d | 2009-05-11 | 2009-05-12 |  |
| 33 | Mouse Part | 2d | 2009-05-13 | 2009-05-14 | 32 |
| 34 | Test code | 3d | 2009-05-15 | 2009-05-19 | 33 |
| 37 | Adding other UML diagrams | 1d | 2009-05-20 | 2009-05-20 |  |

Changed:

| ID | Task | Start | Finish | Duration | Complete | Predecessors | Other |
| --- | --- | --- | --- | --- | --- | --- | --- |
| 5 | **Project Management** |  | 2009-06-25 → 2009-06-26 (+1d) | 91d → 92d |  |  |  |
| 9 | Code Pre-reorganization |  |  |  |  | none → 7, 8 | was named Code Reorganization |
| 10 | Move project to Google Code | 2009-01-09 → 2009-01-08 (-1d) | 2009-01-09 → 2009-01-08 (-1d) |  |  |  |  |
| 11 | Write a script to have a compiled application for each version | 2009-01-08 → 2009-01-09 (+1d) | 2009-01-08 → 2009-01-09 (+1d) |  |  | none → 10 |  |
| 16 | **Graphical Layer Abstraction** |  | 2009-01-15 → 2009-01-16 (+1d) | 7d → 8d |  |  |  |
| 18 | Integration of GWT Incubator graphic engine | 2008-12-12 → 2008-12-18 (+6d) | 2009-01-15 → 2009-01-16 (+1d) |  |  | none → 17 |  |
| 19 | **Visual Interface** |  | 2009-01-29 → 2009-01-30 (+1d) | 7d → 8d |  |  |  |
| 20 | Creation |  | 2009-01-08 → 2009-01-09 (+1d) | 1d → 2d |  |  |  |
| 21 | Visual Interface Code spearation |  |  |  |  | none → 20 | was named VI Code spearation |
| 24 | HTML Loading Screen | 2009-01-29 → 2009-01-30 (+1d) | 2009-01-29 → 2009-01-30 (+1d) |  |  | none → 23 |  |
| 25 | **Cleanness of code** | 2009-01-08 → 2009-01-23 (+15d) | 2009-01-08 → 2009-04-17 (+99d) | 1d → 32d | 75% → 42% |  |  |
| 26 | Code cleanup | 2009-01-08 → 2009-01-23 (+15d) | 2009-01-08 → 2009-04-17 (+99d) | 1d → 32d | 80% → 30% |  |  |
| 27 | **Code Rewrite** | 2009-01-08 → 2009-01-23 (+15d) | 2009-01-08 → 2009-04-02 (+84d) | 1d → 21d |  |  |  |
| 28 | Dynamic Edition System | 2009-01-08 → 2009-01-23 (+15d) | 2009-01-08 → 2009-03-20 (+71d) | 1d → 15d |  |  |  |
| 29 | Artifacts Drawing | 2009-01-08 → 2009-01-30 (+22d) | 2009-01-08 → 2009-04-02 (+84d) | 1d → 19d |  |  | was named Artifacts |
| 30 | Code JavaDoc | 2009-03-12 → 2009-04-06 (+25d) | 2009-03-12 → 2009-05-08 (+57d) | 1d → 25d |  |  |  |
| 31 | **Interaction emulation layer** | 2009-03-27 → 2009-05-11 (+45d) | 2009-03-27 → 2009-05-19 (+53d) | 1d → 7d |  | none → 30 |  |
| 35 | **Adding other UML diagrams** | 2009-05-04 → 2009-05-20 (+16d) | 2009-05-04 → 2009-06-23 (+50d) | 1d → 25d |  | none → 31 |  |
| 36 | Adding object diagram for code generation | 2009-04-02 → 2009-05-20 (+48d) | 2009-04-02 → 2009-06-23 (+82d) | 1d → 25d |  |  |  |
| 38 | If available time remaining : Saving diagram in xml like format | 2009-04-13 → 2009-06-24 (+72d) | 2009-04-13 → 2009-06-24 (+72d) | 1d → 0d |  | none → 36 | was named Saving diagram in xml like format |
| 39 | If available time remaining : Setting a server side to save diagrams like documents in google docs | 2009-04-20 → 2009-06-24 (+65d) | 2009-04-20 → 2009-06-24 (+65d) | 1d → 0d |  | none → 36 | was named Setting a server side to save diagrams like documents in google docs |

## Version 3 (saved 2009-02-26)

Note of the change: Grantt Diagram is finished

Last finish stays 2009-06-26.

Changed:

| ID | Task | Start | Finish | Duration | Complete | Other |
| --- | --- | --- | --- | --- | --- | --- |
| 2 | **Internship (PFE)** |  |  |  | 0% → 18% | resources none → Florian Mounier |
| 3 | Dual Education (Alternance) |  |  |  | 0% → 65% | resources none → Florian Mounier |
| 4 | Full Time |  |  |  |  | resources none → Florian Mounier |
| 5 | **Project Management** |  |  |  |  | resources none → Florian Mounier |
| 6 | **Project Setup** |  |  |  |  | resources none → Florian Mounier |
| 7 | Platform setup |  |  |  |  | resources none → Florian Mounier |
| 8 | Setting up a temporary svn |  |  |  |  | resources none → Florian Mounier |
| 9 | Code Pre-reorganization |  |  |  |  | resources none → Florian Mounier |
| 10 | Move project to Google Code |  |  |  |  | resources none → Florian Mounier |
| 11 | Script to compile application for each revision |  |  |  |  | was named Write a script to have a compiled application for each version; resources none → Florian Mounier |
| 12 | Wiki creation |  |  |  |  | resources none → Florian Mounier |
| 13 | Wiki Updating |  |  |  |  | resources none → Florian Mounier |
| 14 | Project's Gantt Diagram |  |  |  |  | resources none → Florian Mounier |
| 15 | Midterm internship meeting |  |  |  |  | resources none → Florian Mounier |
| 16 | **Graphical Layer Abstraction** |  |  |  |  | resources none → Florian Mounier |
| 17 | Set up a bridge for graphic engines |  |  |  |  | resources none → Florian Mounier |
| 18 | Integration of GWT Incubator graphic engine |  |  |  |  | resources none → Florian Mounier |
| 19 | **Visual Interface** |  |  |  |  | resources none → Florian Mounier |
| 20 | Creation |  |  |  |  | resources none → Florian Mounier |
| 21 | Visual Interface Code spearation |  |  |  |  | resources none → Florian Mounier |
| 22 | Improvements |  |  |  |  | resources none → Florian Mounier |
| 23 | Context Menu |  |  |  |  | resources none → Florian Mounier |
| 24 | HTML Loading Screen |  |  |  |  | resources none → Florian Mounier |
| 25 | **Cleanness of code** |  |  |  | 42% → 33% | resources none → Florian Mounier |
| 26 | Code cleanup |  |  |  |  | resources none → Florian Mounier |
| 27 | **Code Rewrite** |  |  |  | 70% → 40% | resources none → Florian Mounier |
| 28 | Dynamic Edition System |  |  |  | 80% → 42% | resources none → Florian Mounier |
| 29 | Artifacts Drawing |  |  |  | 60% → 39% | resources none → Florian Mounier |
| 30 | Code JavaDoc |  |  |  |  | resources none → Florian Mounier |
| 31 | **Interaction emulation layer** |  |  |  |  | resources none → Florian Mounier |
| 32 | Keyboard Part |  |  |  |  | resources none → Florian Mounier |
| 33 | Mouse Part |  |  |  |  | resources none → Florian Mounier |
| 34 | Test code |  |  |  |  | resources none → Florian Mounier |
| 35 | **Adding other UML diagrams** |  |  |  |  | resources none → Florian Mounier |
| 36 | Adding object diagram for code generation |  |  |  |  | resources none → Florian Mounier |
| 37 | Adding other UML diagrams | 2009-05-20 → 2009-06-23 (+34d) | 2009-05-20 → 2009-06-23 (+34d) | 1d → 0d |  | resources none → Florian Mounier |
| 38 | Opt : Saving diagram in xml like format |  |  |  |  | was named If available time remaining : Saving diagram in xml like format; resources none → Florian Mounier |
| 39 | Opt : Server side saving diagrams like google docs |  |  |  |  | was named If available time remaining : Setting a server side to save diagrams like documents in google docs; resources none → Florian Mounier |
